# Vizsgaremek elkészítésének folyamata

Schedule from MS Project, 2022-07-01 to 2023-01-22.
Vizsgaremek elkészítésének folyamata

## Calendars

- 24 órás: Mon 19:00-21:00; Tue 20:00-21:00; Wed 19:00-21:00; Thu 17:00-21:00; Fri 16:00-21:00; Sat-Sun 08:00-21:00. Exceptions (off unless hours are given): 2022-12-24 (Szenteste), 2022-12-25 to 2022-12-26 (Karácsony), 2022-12-31 (Szilveszter), 2023-01-01 (Új év).

## Resources

| Resource |
| --- |
| Földháti Marina |
| Komáromi Laura |

## Schedule

| ID | WBS | Task | Duration | Start | Finish | Predecessors | Total slack | Free slack | Resources | Work |
| --- | --- | --- | --- | --- | --- | --- | --- | --- | --- | --- |
| 1 | 1 | **Specifikálás** | 28d | 2022-07-01 | 2022-08-07 |  | 0d |  |  | 290h |
| 2 | 1.1 | Szoftver céljának meghatározása | 21d | 2022-07-01 | 2022-07-30 |  | 0d |  | Földháti Marina; Komáromi Laura | 208h |
| 3 | 1.2 | A szoftverrel szemben támasztott követelmények definiálása | 7d | 2022-07-30 | 2022-08-07 | 2 | 0d |  | Földháti Marina; Komáromi Laura | 82h |
| 4 | 2 | **Tervezés** | 13d | 2022-08-07 | 2022-08-27 |  | 0d |  |  | 208h |
| 5 | 2.1 | A szoftver felépítésének, szerkezetének meghatározása | 5d | 2022-08-07 | 2022-08-14 | 3 | 0d |  | Földháti Marina; Komáromi Laura | 80h |
| 6 | 2.2 | Adatbázis-terv elkészítése | 4d | 2022-08-14 | 2022-08-20 | 5 | 0d |  | Földháti Marina; Komáromi Laura | 64h |
| 7 | 2.3 | Programnyelvek, keretrendszerek kiválasztása | 4d | 2022-08-20 | 2022-08-27 | 6 | 0d |  | Földháti Marina; Komáromi Laura | 64h |
| 8 | 3 | **Implementálás / Kódolás** | 73d | 2022-08-27 | 2022-12-05 |  | 0d |  |  | 1112h |
| 9 | 3.1 | Adatbázis elkészítése | 7d | 2022-08-27 | 2022-09-04 | 7 | 0d |  | Földháti Marina; Komáromi Laura | 112h |
| 10 | 3.2 | **Adminisztrációs felület (natív asztali alkalmazás C# nyelven)** | 59d | 2022-09-04 | 2022-11-26 |  | 7d |  |  | 472h |
| 11 | 3.2.1 | Osztályok elkészítése | 10d | 2022-09-04 | 2022-09-18 | 9 | 7d | 0d | Földháti Marina | 80h |
| 12 | 3.2.2 | **Formok kialakítása** | 14d | 2022-09-18 | 2022-10-08 |  | 7d |  |  | 112h |
| 13 | 3.2.2.1 | Bejelentkezés Form létrehozása | 3d | 2022-09-18 | 2022-09-24 | 11 | 7d | 0d | Földháti Marina | 24h |
| 14 | 3.2.2.2 | Felhasználó, Egyéb... (Állomások, Munkakörök) rögzítés Form létrehozása | 3d | 2022-09-24 | 2022-09-26 | 13 | 7d | 0d | Földháti Marina | 24h |
| 15 | 3.2.2.3 | Módosításokhoz használt központi Form kialakítása (DataGrid, megfelelő adatokkal) | 4d | 2022-09-26 | 2022-10-02 | 14 | 7d | 0d | Földháti Marina | 32h |
| 16 | 3.2.2.4 | Felhasználó, Állomások, Munkakörök módosításához használt Formok létrehozás | 4d | 2022-10-02 | 2022-10-08 | 15 | 7d | 0d | Földháti Marina | 32h |
| 17 | 3.2.3 | Excel export létrehozása (Létező mappába, mindig ugyanazt a fájlnevet használva) | 3d | 2022-10-08 | 2022-10-13 | 16 | 7d | 0d | Földháti Marina | 24h |
| 18 | 3.2.4 | Jelszó titkosítás megvalósítása | 14d | 2022-10-14 | 2022-10-31 | 17 | 7d | 0d | Földháti Marina | 112h |
| 19 | 3.2.5 | Adatbázis kapcsolat CRUD műveletek | 14d | 2022-10-31 | 2022-11-20 | 18 | 7d | 0d | Földháti Marina | 112h |
| 20 | 3.2.6 | Admin tábla kezelése | 3d | 2022-11-20 | 2022-11-26 | 19 | 7d | 0d | Földháti Marina | 24h |
| 21 | 3.2.7 | Excel export módosítás (saját mappa létrehozása, ha még nem létezik, egyedi fájlnevek) | 1d | 2022-11-26 | 2022-11-26 | 20 | 7d |  | Földháti Marina | 8h |
| 22 | 3.3 | **Webes felület** | 66d | 2022-09-04 | 2022-12-05 |  | 0d |  |  | 528h |
| 23 | 3.3.1 | **Backend (Laravel keretrendszer használatával)** | 23d | 2022-10-15 | 2022-11-14 |  | 0d |  |  | 184h |
| 24 | 3.3.1.1 | Modelek létrehozása | 4d | 2022-10-15 | 2022-10-20 | 35 | 0d |  | Komáromi Laura | 32h |
| 25 | 3.3.1.2 | Requestek elkészítése | 3d | 2022-10-21 | 2022-10-23 | 24 | 0d |  | Komáromi Laura | 24h |
| 26 | 3.3.1.3 | Controllerek létrehozása | 7d | 2022-10-23 | 2022-11-03 | 25 | 0d |  | Komáromi Laura | 56h |
| 27 | 3.3.1.4 | Route-ok elkészítése | 2d | 2022-11-04 | 2022-11-05 | 26 | 0d |  | Komáromi Laura | 16h |
| 28 | 3.3.1.5 | Exportok létrehozása (Excel exporthoz) | 3d | 2022-11-05 | 2022-11-10 | 27 | 0d |  | Komáromi Laura | 24h |
| 29 | 3.3.1.6 | Controllerek kiegészítése | 2d | 2022-11-11 | 2022-11-12 | 28 | 0d |  | Komáromi Laura | 16h |
| 30 | 3.3.1.7 | Route-ok bővítése | 2d | 2022-11-12 | 2022-11-14 | 29 | 0d |  | Komáromi Laura | 16h |

| ID | WBS | Task | Duration | Start | Finish | Predecessors | Total slack | Resources | Work |
| --- | --- | --- | --- | --- | --- | --- | --- | --- | --- |
| 31 | 3.3.2 | **Frontend (React keretrendszer használatával)** | 66d | 2022-09-04 | 2022-12-05 |  | 0d |  | 344h |
| 32 | 3.3.2.1 | Dashboard elkészítése | 7d | 2022-09-04 | 2022-09-15 | 9 | 0d | Komáromi Laura | 56h |
| 33 | 3.3.2.2 | Felső menüsáv elkészítése | 3d | 2022-09-16 | 2022-09-18 | 32 | 0d | Komáromi Laura | 24h |
| 34 | 3.3.2.3 | Bal oldali menü kialakítása | 4d | 2022-09-18 | 2022-09-24 | 33 | 0d | Komáromi Laura | 32h |
| 35 | 3.3.2.4 | Alodalak létrehozása | 14d | 2022-09-24 | 2022-10-15 | 34 | 0d | Komáromi Laura | 112h |
| 36 | 3.3.2.5 | Frontend összekapcsolása a backenddel | 10d | 2022-11-14 | 2022-11-28 | 30 | 0d | Komáromi Laura | 80h |
| 37 | 3.3.2.6 | Felhasználói bejelentkezés megvalósítása | 5d | 2022-11-28 | 2022-12-05 | 36 | 0d | Komáromi Laura | 40h |
| 38 | 4 | **Tesztelés / hibakeresés** | 13d | 2022-12-05 | 2022-12-30 |  | 0d |  | 152h |
| 39 | 4.1 | Manuális tesztelés | 3d | 2022-12-05 | 2022-12-10 | 37, 21 | 0d | Földháti Marina; Komáromi Laura | 48h |
| 40 | 4.2 | API route-ok ellenőrzése Postman Collection segítségével | 3d | 2022-12-10 | 2022-12-15 | 39 | 7d | Komáromi Laura | 24h |
| 41 | 4.3 | Backend tesztelés | 10d | 2022-12-10 | 2022-12-30 | 39 | 0d | Földháti Marina | 80h |
| 42 | 5 | **Dokumentálás** | 15d | 2022-12-30 | 2023-01-22 |  | 0d |  | 200h |
| 43 | 5.1 | Bevezető rész megírása | 2d | 2022-12-30 | 2023-01-07 | 40, 41 | 0d | Földháti Marina | 16h |
| 44 | 5.2 | Adminisztrációs felülettel kapcsolatos dokumentáció létrehozása | 10d | 2023-01-07 | 2023-01-21 | 43 | 0d | Földháti Marina | 80h |
| 45 | 5.3 | Webes felülettel kapcsolatos dokumentáció megírása | 10d | 2022-12-30 | 2023-01-15 | 40, 41 | 2d | Komáromi Laura | 80h |
| 46 | 5.4 | Összefoglalás elkészítése | 3d | 2023-01-21 | 2023-01-22 | 44, 45 | 0d | Földháti Marina | 24h |
